# bt7

Schedule from MS Project, 2024-10-26 to 2024-12-17.
nâng cấp, mở rộng lò mổ quận ninh kiều
tnhh tư vấn đầu tư nghinh phong

## Calendars

- lịch công trình: Mon-Sun 07:00-08:00, 13:00-17:00.

## Resources

| Resource | Unit | Rate |
| --- | --- | --- |
| nhân công |  | 26250 |
| đầm bàn |  |  |
| đầm rung tự hành |  |  |
| máy đầm bánh lốp |  |  |
| máy đào ngầu nghịch |  |  |
| máy hàn điện |  |  |
| máy lu bánh thép |  |  |
| máy lu bánh lốp |  |  |
| máy nén khí điêzen |  |  |
| máy rải đá |  |  |
| máy rải bê tông nhựa |  |  |
| máy trộn bê tông |  |  |
| máy ủi |  |  |
| ô tô tưới nhựa |  |  |
| ô tô tưới nước |  |  |
| thiết bị nấu nhựa |  |  |
| bê tông nhựa hạt trung c12.5 |  |  |
| cấp phối đá dăm loại 1 |  |  |
| cát vàng đổ bê tông | m3 |  |
| đá 1x2 | m3 |  |
| đá 4x6 | m3 |  |
| dầu hỏa | lít |  |
| nhựa bitum | kg |  |
| nước | lít |  |
| que hàn | kg |  |
| thép hình | kg |  |
| thép tấm | kg |  |
| xi măng pcb40 | kg |  |

## Schedule

| ID | WBS | Task | Duration | Start | Finish | Predecessors | Total slack |
| --- | --- | --- | --- | --- | --- | --- | --- |
| 1 | 1 | **tổng thời gian** | 33d | 2024-10-26 | 2024-12-17 |  | 0d |
| 2 | 1.1 | dọn dẹp, vệ sinh mặt bằng thi công | 2d | 2024-10-26 | 2024-10-29 |  | 0d |
| 3 | 1.2 | đào san đất bằng máy đào | 6d | 2024-10-29 | 2024-11-07 | 2 | 0d |
| 4 | 1.3 | bê tông lót móng, đá 4x6,m100 | 10d | 2024-11-01 | 2024-11-17 | 3SS+2d | 0d |
| 5 | 1.4 | sxld tháo dỡ ván khuôn gờ chắn bánh xe | 14d | 2024-11-04 | 2024-11-27 | 4SS+2d | 0d |
| 6 | 1.5 | bê tông gờ chắn bánh xe, đá 1x2,m250 | 20d | 2024-11-09 | 2024-12-11 | 5SS+3d | 0d |
| 7 | 1.6 | làm lớp móng trên,cpđd loại 1 | 8d | 2024-11-28 | 2024-12-11 | 6SS+12d | 0d |
| 8 | 1.7 | tưới nhựa dính bám mặt đường | 4d | 2024-12-11 | 2024-12-17 | 7 | 0d |
| 9 | 1.8 | rải thảm bê tông nhực hạt trung c12,50 | 4d | 2024-12-11 | 2024-12-17 | 8FF | 0d |
